# Main Assessment Model ERS Nov 2014.mpp

How a schedule from MS Project changed from version to version. A marks actual dates.

## Version 1 (saved 2020-10-30)

| ID | WBS | Task | Duration | Start | Finish | Predecessors | Total float | Constraint |
| --- | --- | --- | --- | --- | --- | --- | --- | --- |
| 1 | 1 | **Stage 1** | 34d? | 2020-10-12 | 2020-11-26 |  |  |  |
| 2 |  | Project costing | 7d? | 2020-10-16 | 2020-10-26 |  | 146d | finish no earlier than 2020-10-26 |
| 3 |  | Project plan creation | 11d? | 2020-10-16 | 2020-10-30 |  | 142d | finish no earlier than 2020-10-30 |
| 4 |  | Assessment of risks | 6d? | 2020-10-16 | 2020-10-23 |  | 147d | finish no earlier than 2020-10-23 |
| 5 |  | Analyse requirements | 11d? | 2020-10-16 | 2020-10-30 |  | 154d | finish no earlier than 2020-10-30 |
| 6 |  | Prepare storyboard for web pages | 11d | 2020-10-23 | 2020-11-06 |  | 90d | start no earlier than 2020-10-23 |
| 7 |  | Establish navigation map | 11d | 2020-10-23 | 2020-11-06 |  | 90d | start no earlier than 2020-10-23 |
| 8 |  | First Report Draft | 14d | 2020-11-09 | 2020-11-26 | 2, 3, 4, 6, 7, 5 | 90d | start no earlier than 2020-11-09 |
| 9 |  | Stage 1 Milestone | 0d | 2020-11-26 | 2020-11-26 |  | 90d | finish no earlier than 2020-11-26 |
| 10 | 2 | **Stage 2** | 45d? | 2020-12-04 | 2021-02-04 | 1 |  |  |
| 11 |  | Collect design documents | 7d | 2020-12-04 | 2020-12-14 |  | 1d |  |
| 12 |  | Develop website to meet design spec | 19d | 2020-12-15 | 2021-01-08 | 11 | 1d |  |
| 13 |  | Prepare test strategy | 7d | 2021-01-11 | 2021-01-19 | 12 | 1d |  |
| 14 |  | Test website using prepared strategy | 4d | 2021-01-20 | 2021-01-25 | 13 | 1d |  |
| 15 |  | Collate a list of errors/defects | 4d | 2021-01-26 | 2021-01-29 | 14 | 1d |  |
| 16 |  | Give evidence of testing | 4d | 2021-02-01 | 2021-02-04 | 15 | 1d |  |
| 17 |  | Stage 2 Milestone | 0d | 2021-02-04 | 2021-02-04 | 16 | 1d |  |
| 18 | 3 | **Stage 3** | 40d? | 2021-02-06 | 2021-04-01 | 10 |  |  |
| 19 |  | Establish criteria to evaluate project | 13d | 2021-02-08 | 2021-02-24 |  | 0d |  |
| 20 |  | Gather evidence to support the evaluation | 13d | 2021-02-25 | 2021-03-15 | 19 | 0d |  |
| 21 |  | Document modifications | 13d | 2021-03-16 | 2021-04-01 | 20 | 0d |  |
| 22 |  | Stage 3 Milestone | 0d | 2021-04-01 | 2021-04-01 | 21 | 0d |  |

## Version 2 (saved 2020-11-09)

Last finish 2021-04-01 → 2021-03-31 (-1d). Complete tasks 0 → 4.

Added:

| ID | Task | Duration | Start | Finish | Predecessors | Constraint |
| --- | --- | --- | --- | --- | --- | --- |
| 12 | Create front end prototype | 14d | 2020-12-14 | 2020-12-31 | 11 |  |
| 19 | Develop remainder of website | 28d | 2021-02-04 | 2021-03-15 |  |  |
| 23 | Usability Evaluation | 7d | 2021-03-19 | 2021-03-29 | 19, 22 | start no earlier than 2021-03-15 |
| 24 | Project evaluation | 7d | 2021-03-19 | 2021-03-29 | 23SS | start no earlier than 2021-03-19 |
| 25 | Product demonstration | 1d | 2021-03-30 | 2021-03-30 | 24 |  |

Removed: 13 Prepare test strategy

Changed:

| ID | Task | Start | Finish | Duration | Complete | Total float | Predecessors | Other |
| --- | --- | --- | --- | --- | --- | --- | --- | --- |
| 1 | **Stage 1** |  |  |  | 0% → 79% |  |  |  |
| 2 | Project costing | 2020-10-16 A | 2020-10-26 A |  | 0% → 100% | 146d → none |  |  |
| 3 | Project plan creation | 2020-10-16 A | 2020-10-30 A |  | 0% → 100% | 142d → none |  |  |
| 4 | Assessment of risks | 2020-10-16 A | 2020-10-23 A |  | 0% → 100% | 147d → none |  |  |
| 5 | Analyse requirements | 2020-10-16 A | 2020-10-30 A |  | 0% → 100% | 154d → none |  |  |
| 6 | Prepare storyboard for web pages | 2020-10-23 A |  |  | 0% → 50% | 90d → 7d |  |  |
| 7 | Establish navigation map | 2020-10-23 A |  |  | 0% → 75% | 90d → 7d |  |  |
| 8 | First Report Draft | 2020-11-09 A |  |  | 0% → 50% | 90d → 89d |  |  |
| 9 | Stage 1 Milestone |  |  |  |  | 90d → 89d | none → 8 |  |
| 11 | Collect design documents |  | 2020-12-14 → 2020-12-11 (-3d) | 7d → 6d |  | 1d → 3d |  |  |
| 13 | Develop website to meet design spec | 2020-12-15 → 2020-12-14 (-1d) | 2021-01-08 → 2021-01-20 (+12d) | 19d → 28d |  | 1d → 3d | 11 → 12SS |  |
| 14 | Prepare test strategy and test website | 2021-01-20 → 2021-01-21 (+1d) | 2021-01-25 → 2021-01-29 (+4d) | 4d → 7d |  | 1d → 3d | Prepare test strategy → 13 | was named Test website using prepared strategy |
| 15 | Collate a list of errors/defects | 2021-01-26 → 2021-02-01 (+6d) | 2021-01-29 → 2021-02-04 (+6d) |  |  | 1d → 3d |  |  |
| 16 | Give evidence of testing |  |  |  |  | 1d → 3d | 15 → 15SS |  |
| 18 | **Stage 3** | 2021-02-06 → 2021-02-04 (-2d) | 2021-04-01 → 2021-03-31 (-1d) |  |  |  |  |  |
| 20 | Establish criteria to evaluate project | 2021-02-08 → 2021-02-11 (+3d) | 2021-02-24 → 2021-02-19 (-5d) | 13d → 7d |  | 0d → 9d | none → 19SS | constraint none → start no earlier than 2021-02-11 |
| 21 | Gather evidence to support the evaluation | 2021-02-25 → 2021-02-22 (-3d) | 2021-03-15 → 2021-03-02 (-13d) | 13d → 7d |  | 0d → 9d |  |  |
| 22 | Document modifications | 2021-03-16 → 2021-03-15 (-1d) | 2021-04-01 → 2021-03-18 (-14d) | 13d → 4d |  | 0d → 1d |  | constraint none → start no earlier than 2021-03-15 |
| 26 | Stage 3 Milestone | 2021-04-01 → 2021-03-30 (-2d) | 2021-04-01 → 2021-03-30 (-2d) |  |  | 0d → 1d | 22 → 25 |  |

## Version 3 (saved 2020-11-20)

Last finish stays 2021-03-31. Complete tasks 4 → 8.

Added:

| ID | Task | Duration | Start | Finish | Constraint |
| --- | --- | --- | --- | --- | --- |
| 8 | Usability Evaluation Document | 11d | 2020-10-30 A | 2020-11-13 A | start no earlier than 2020-10-23 |

Changed:

| ID | Task | Finish | Complete | Total float | Predecessors |
| --- | --- | --- | --- | --- | --- |
| 1 | **Stage 1** |  | 79% → 99% |  |  |
| 6 | Prepare storyboard for web pages | 2020-11-06 A | 50% → 100% | 7d → none |  |
| 7 | Establish navigation map | 2020-11-06 A | 75% → 100% | 7d → none |  |
| 9 | First Report Draft | 2020-11-26 A | 50% → 100% | 89d → none | 2, 3, 4, 6, 7, 5 → 2, 3, 4, 6, 8, 5 |
